# Rascal Master Schedule

How a schedule from GanttProject changed from version to version. A marks actual dates.

## Version 1 (saved 2014-03-20)

Note of the change: New master gannt chart that is to be used for defining Boeing milestones. Currently have defined overarching categories and a few ADC and PRP requirements.

| ID | WBS | Task | Duration | Start | Finish | Predecessors |
| --- | --- | --- | --- | --- | --- | --- |
| 1 | 1 | **Primary ADC Subsystem** | 16d | 2014-03-17 | 2014-04-01 |  |
| 2 |  | Preliminary Relative Orbit Analysis | 5d | 2014-03-17 | 2014-03-21 |  |
| 3 |  | Preliminary Controls Analysis | 4d | 2014-03-22 | 2014-03-25 | 2 |
| 4 |  | Preliminary Controls Implementation | 7d | 2014-03-26 | 2014-04-01 | 3 |
| 5 |  | Preliminary ADC Sensor Research | 12d | 2014-03-21 | 2014-04-01 |  |
| 6 |  | Primary PLD Subsystem | 138d | 2014-03-17 | 2014-08-01 |  |
| 7 | 3 | **PRP Subsystem** | 12d | 2014-03-21 | 2014-04-01 |  |
| 8 |  | Preliminary PRP System Research | 12d | 2014-03-21 | 2014-04-01 |  |
| 9 |  | Primary CDH Subsystem | 138d | 2014-03-17 | 2014-08-01 |  |
| 10 |  | DCK Subsystem | 138d | 2014-03-17 | 2014-08-01 |  |
| 11 |  | Secondary STR Subsystem | 138d | 2014-03-17 | 2014-08-01 |  |
| 12 |  | Secondary COM Subsystem | 138d | 2014-03-17 | 2014-08-01 |  |
| 13 |  | Secondary PWR Subsystem | 138d | 2014-03-17 | 2014-08-01 |  |
| 14 |  | Secondary ADC Subsystem | 138d | 2014-03-17 | 2014-08-01 |  |
| 15 |  | Secondary CDH Subsystem | 138d | 2014-03-17 | 2014-08-01 |  |
| 16 |  | Student Graduation | 0d | 2014-05-15 | 2014-05-15 |  |
| 17 |  | EDU Delivery | 0d | 2014-08-01 | 2014-08-01 |  |

## Version 2 (saved 2014-03-20)

Note of the change: All things related to getting ready for boeing document submission.

Last finish stays 2014-08-01.

Added:

| ID | Task | Duration | Start | Finish | Predecessors | Resources |
| --- | --- | --- | --- | --- | --- | --- |
| 1 | **Rascal Mission CONOPS** | 27d | 2014-03-06 | 2014-04-01 |  | Tom Moline; Nate Richard |
| 2 | Rascal CONOPS Trade Study | 15d | 2014-03-06 | 2014-03-20 |  | Tom Moline; Nate Richard |
| 3 | Rascal CONOPS Selection | 0d | 2014-03-20 | 2014-03-20 |  |  |
| 4 | CONOPS Revision 1 | 12d | 2014-03-21 | 2014-04-01 |  |  |
| 5 | Rascal Mission Objective and Success Criterea | 12d | 2014-03-21 | 2014-04-01 | 4SS | Tom Moline; Nate Richard |
| 6 | Preliminary Rascal RVM | 12d | 2014-03-21 | 2014-04-01 | 4SS | Tom Moline; Nate Richard |
| 16 | Review Boeing Colony-II Bus User Guide | 5d | 2014-03-21 | 2014-03-25 |  |  |
| 17 | Preliminary Spacecraft Functional Block Diagram | 12d | 2014-03-26 | 2014-04-06 | 16 |  |
| 19 | Define Separation Requirements | 12d | 2014-03-21 | 2014-04-01 |  | Tom Moline; Jennifer Babb |
| 20 | Preliminary Docking Mechanism Research | 12d | 2014-03-21 | 2014-04-01 |  | Jennifer Babb |
| 21 | Assess Primary Spacecraft Docking Integration | 12d | 2014-03-21 | 2014-04-01 | 20SS |  |
| 22 | Preliminary Methodology Trade Study | 12d | 2014-04-02 | 2014-04-13 | 20 |  |
| 24 | Review Previous Skeleton Design Work | 5d | 2014-03-21 | 2014-03-25 |  | Christopher Berry |
| 25 | Preliminary Mass Budget | 8d | 2014-03-25 | 2014-04-01 |  | Christopher Berry |
| 26 | Preliminary Component Listing | 12d | 2014-03-21 | 2014-04-01 |  |  |
| 28 | Secondary Link Budget Analysis | 5d | 2014-03-21 | 2014-03-25 |  |  |
| 29 | Preliminary Component Research | 12d | 2014-03-21 | 2014-04-01 |  |  |
| 31 | Secondary Power Budget | 12d | 2014-03-21 | 2014-04-01 |  | Alex Howard |
| 32 | Preliminary Component Selection | 14d | 2014-04-02 | 2014-04-15 | 31 |  |
| 34 | Preliminary Detumbling Analysis | 19d | 2014-03-21 | 2014-04-08 |  |  |
| 35 | Preliminary Detumbling Requirements | 7d | 2014-04-09 | 2014-04-15 | 34 |  |
| 36 | Preliminary Detumbling Component Selection | 14d | 2014-04-09 | 2014-04-22 | 34 |  |
| 37 | Determine GPS Frequency | 5d | 2014-03-21 | 2014-03-25 |  |  |
| 39 | Preliminary Spacecraft Functional Block Diagram | 12d | 2014-03-21 | 2014-04-01 |  |  |
| 40 | Preliminary Software System Overview | 12d | 2014-04-02 | 2014-04-13 | 39 |  |

Changed:

| ID | Task | Start | Finish | Duration |
| --- | --- | --- | --- | --- |
| 15 | **Primary CDH Subsystem** | 2014-03-17 → 2014-03-21 (+4d) | 2014-08-01 → 2014-04-06 (-117d) | 138d → 17d |
| 18 | **DCK Subsystem** | 2014-03-17 → 2014-03-21 (+4d) | 2014-08-01 → 2014-04-13 (-110d) | 138d → 24d |
| 23 | **Secondary STR Subsystem** | 2014-03-17 → 2014-03-21 (+4d) | 2014-08-01 → 2014-04-01 (-122d) | 138d → 12d |
| 27 | **Secondary COM Subsystem** | 2014-03-17 → 2014-03-21 (+4d) | 2014-08-01 → 2014-04-01 (-122d) | 138d → 12d |
| 30 | **Secondary PWR Subsystem** | 2014-03-17 → 2014-03-21 (+4d) | 2014-08-01 → 2014-04-15 (-108d) | 138d → 26d |
| 33 | **Secondary ADC Subsystem** | 2014-03-17 → 2014-03-21 (+4d) | 2014-08-01 → 2014-04-22 (-101d) | 138d → 33d |
| 38 | **Secondary CDH Subsystem** | 2014-03-17 → 2014-03-21 (+4d) | 2014-08-01 → 2014-04-13 (-110d) | 138d → 24d |

## Version 3 (saved 2014-03-24)

Note of the change: Trade study is almost done. Just need to add a cost analysis and conclusion.

Last finish stays 2014-08-01.

Added:

| ID | Task | Duration | Start | Finish | Predecessors |
| --- | --- | --- | --- | --- | --- |
| 7 | Mission Status Review | 0d | 2014-04-02 | 2014-04-02 | 6 |
| 12 | Secondary Controls Matlab Algorithm | 15d | 2014-04-09 | 2014-04-23 | 11 |
| 15 | Verify Operation of Hardware System | 4d | 2014-03-21 | 2014-03-24 |  |
| 16 | Hardware System Integration | 7d | 2014-03-25 | 2014-03-31 | 15 |
| 17 | Verify Integrated Hardware System | 7d | 2014-04-01 | 2014-04-07 | 16 |
| 18 | Configure Hardware Drivers | 7d | 2014-04-08 | 2014-04-14 | 17 |
| 19 | Finalize and Verify Software in SDK | 7d | 2014-04-15 | 2014-04-21 | 18 |
| 20 | Verify Integrated Hardware and Software System | 7d | 2014-04-22 | 2014-04-28 | 19 |
| 21 | Test, Calibrate, and Demonstrate | 7d | 2014-04-29 | 2014-05-05 | 20 |
| 24 | **Prototype Design** | 29d | 2014-03-24 | 2014-04-21 |  |
| 25 | Coordinate System Definitions | 5d | 2014-03-24 | 2014-03-28 |  |
| 26 | Sizing Requirements | 5d | 2014-03-24 | 2014-03-28 |  |
| 27 | DeltaV Requirements | 12d | 2014-03-24 | 2014-04-04 |  |
| 28 | Tank Design | 22d | 2014-03-24 | 2014-04-14 |  |
| 29 | Thruster Design/Layout | 22d | 2014-03-24 | 2014-04-14 |  |
| 30 | Valve Integration Design | 15d | 2014-04-07 | 2014-04-21 |  |
| 31 | Valve Testing | 15d | 2014-04-07 | 2014-04-21 | 30SS |
| 32 | **Functional Prototype** | 29d | 2014-04-21 | 2014-05-19 |  |
| 33 | Print Prototype | 8d | 2014-04-21 | 2014-04-28 |  |
| 34 | Valve Integration | 8d | 2014-04-28 | 2014-05-05 |  |
| 35 | Functional Testing | 15d | 2014-05-05 | 2014-05-19 |  |
| 36 | **Functional Engineering Unit** | 75d | 2014-05-19 | 2014-08-01 |  |
| 37 | Print Engineering Unit | 15d | 2014-05-19 | 2014-06-02 |  |
| 38 | Functional Testing | 61d | 2014-06-02 | 2014-08-01 |  |
| 39 | Pressure Testing | 22d | 2014-06-09 | 2014-06-30 |  |
| 40 | Environmental Testing | 40d | 2014-06-23 | 2014-08-01 |  |

Changed:

| ID | Task | Start | Finish | Duration | Other |
| --- | --- | --- | --- | --- | --- |
| 1 | **Rascal Mission CONOPS** |  | 2014-04-01 → 2014-04-02 (+1d) | 27d → 28d |  |
| 8 | **Primary ADC Subsystem** |  | 2014-04-01 → 2014-04-23 (+22d) | 16d → 38d |  |
| 11 | Preliminary Controls Matlab Algorithm |  | 2014-04-01 → 2014-04-08 (+7d) | 7d → 14d | was named Preliminary Controls Implementation |
| 14 | **Primary PLD Subsystem** | 2014-03-17 → 2014-03-21 (+4d) | 2014-08-01 → 2014-05-05 (-88d) | 138d → 46d |  |
| 22 | **PRP Subsystem** |  | 2014-04-01 → 2014-08-01 (+122d) | 12d → 134d |  |
